# Cronograma

Schedule from MS Project, 2024-05-31 to 2024-06-26, status date 2024-06-24, costs in R$, A marks actual dates.

## Calendars

- Padrão: Mon-Fri 09:00-12:00, 13:00-18:00; Sat-Sun off.

## Resources

| Resource | Rate |
| --- | --- |
| Arquiteto de Software | 80 |
| Desenvolvedor Principal | 60 |
| Testador de Qualidade | 55 |
| Desenvolvedor e Mantenedor de Código | 60 |
| Registrador e Documentador Técnico | 60 |

## Schedule

| ID | WBS | Task | Type | Duration | Start | Finish | Predecessors | Complete | Remaining | Baseline start | Baseline finish | Baseline duration | Total slack | Resources | Work | Actual work | Cost | Baseline cost | Actual cost |
| --- | --- | --- | --- | --- | --- | --- | --- | --- | --- | --- | --- | --- | --- | --- | --- | --- | --- | --- | --- |
| 1 | 1 | **Projeto: Sistema The Store** |  | 18.5d? | 2024-05-31 09:00 A | 2024-06-26 14:00 |  | 94% | 1.11d? | 2024-05-31 09:00 | 2024-07-16 09:24 | 32.05d? | 0d |  | 285.8h | 273.8h | 18,531.83 | 27,186.83 | 17,811.83 |
| 2 | 1.1 | **Prospecção** |  | 3.58d | 2024-05-31 09:00 A | 2024-06-05 14:40 A |  | 100% |  | 2024-05-31 09:00 | 2024-06-07 09:40 | 5.08d |  |  | 16h | 16h | 1,000.83 | 1,195.83 | 1,000.83 |
| 3 | 1.1.1 | **PTEC** |  | 3.08d | 2024-05-31 09:00 A | 2024-06-05 09:40 A |  | 100% |  | 2024-05-31 09:00 | 2024-06-05 09:40 | 3.08d |  |  | 14h | 14h | 860.83 | 860.83 | 860.83 |
| 4 | 1.1.1.1 | Estudar Domínio de Aplicação |  | 1d | 2024-05-31 09:00 A | 2024-05-31 18:00 A |  | 100% |  | 2024-05-31 09:00 | 2024-05-31 18:00 | 1d |  | Registrador e Documentador Técnico [12.5%] | 1h | 1h | 60 | 60 | 60 |
| 5 | 1.1.1.2 | Reunir-se com Cliente |  | 0.33d | 2024-06-03 09:00 A | 2024-06-03 11:40 A | 4 | 100% |  | 2024-06-03 09:00 | 2024-06-03 11:40 | 0.33d |  | Arquiteto de Software [25%]; Desenvolvedor Principal [25%]; Registrador e Documentador Técnico [25%] | 2h | 2h | 133.33 | 133.33 | 133.33 |
| 6 | 1.1.1.3 | Redigir PTEC |  | 1.25d | 2024-06-03 11:40 A | 2024-06-04 14:40 A | 5 | 100% |  | 2024-06-03 11:40 | 2024-06-04 14:40 | 1.25d |  | Registrador e Documentador Técnico | 10h | 10h | 600 | 600 | 600 |
| 7 | 1.1.1.4 | Revisar PTEC |  | 0.5d | 2024-06-04 14:40 A | 2024-06-05 09:40 A | 6 | 100% |  | 2024-06-04 14:40 | 2024-06-05 09:40 | 0.5d |  | Arquiteto de Software [12.5%]; Testador de Qualidade [12.5%] | 1h | 1h | 67.5 | 67.5 | 67.5 |
| 8 | 1.1.2 | **Estimativa Preliminar de Tamanho** |  | 0.5d | 2024-06-05 09:40 A | 2024-06-05 14:40 A |  | 100% |  | 2024-06-05 09:40 | 2024-06-05 14:40 | 0.5d |  |  | 2h | 2h | 140 | 140 | 140 |
| 9 | 1.1.2.1 | Realizar Estimativa Preliminar de Tamanho |  | 0.5d | 2024-06-05 09:40 A | 2024-06-05 14:40 A | 7 | 100% |  | 2024-06-05 09:40 | 2024-06-05 14:40 | 0.5d |  | Arquiteto de Software [25%]; Registrador e Documentador Técnico [25%] | 2h | 2h | 140 | 140 | 140 |
| 10 | 1.1.3 | **Cronograma e Orçamento Preliminares** |  | 0d | 2024-06-01 09:00 A | 2024-06-01 18:00 A |  | 100% |  | 2024-06-05 14:40 | 2024-06-07 09:40 | 1.5d |  |  |  |  |  | 195 |  |
| 11 | 1.1.3.1 | Elaborar Cronograma / Orçamento Prel. | milestone | 0d | 2024-06-01 09:00 A | 2024-06-01 09:00 A | 9 | 100% |  | 2024-06-05 14:40 | 2024-06-06 09:40 | 0.5d |  | Arquiteto de Software [25%]; Registrador e Documentador Técnico [25%] |  |  |  | 140 |  |
| 12 | 1.1.3.2 | Revisar Estimativas de Cronograma e Orçamento Prel. | milestone | 0d | 2024-06-01 09:00 A | 2024-06-01 18:00 A | 11 | 100% |  | 2024-06-06 09:40 | 2024-06-07 09:40 | 1d |  | Testador de Qualidade [12.5%] |  |  |  | 55 |  |
| 13 | 1.2 | **Análise** |  | 5d | 2024-06-01 09:00 A | 2024-06-07 18:00 A |  | 100% |  | 2024-06-07 09:40 | 2024-06-14 15:20 | 5.58d |  |  | 66h | 66h | 4,115 | 4,475 | 4,115 |
| 14 | 1.2.1 | **Documento de Requisitos** |  | 1d | 2024-06-01 09:00 A | 2024-06-03 18:00 A |  | 100% |  | 2024-06-07 09:40 | 2024-06-12 10:20 | 3.08d |  |  | 24h | 24h | 1,580 | 3,380 | 1,580 |
| 15 | 1.2.1.1 | Reunir-se com Cliente | milestone | 0d | 2024-06-01 09:00 A | 2024-06-01 18:00 A | 12 | 100% |  | 2024-06-07 09:40 | 2024-06-07 13:20 | 0.33d |  | Arquiteto de Software [75%]; Desenvolvedor Principal [75%]; Registrador e Documentador Técnico [75%] |  |  |  | 400 |  |
| 16 | 1.2.1.2 | Elaborar DRE |  | 1d | 2024-06-01 09:00 A | 2024-06-03 18:00 A | 15 | 100% |  | 2024-06-07 13:20 | 2024-06-11 15:20 | 2.25d |  | Arquiteto de Software; Registrador e Documentador Técnico | 16h | 16h | 1,120 | 2,520 | 1,120 |
| 17 | 1.2.1.3 | Revisar DRE |  | 0.5d | 2024-06-03 09:00 A | 2024-06-03 14:00 A | 16 | 100% |  | 2024-06-11 15:20 | 2024-06-12 10:20 | 0.5d |  | Desenvolvedor Principal; Testador de Qualidade | 8h | 8h | 460 | 460 | 460 |
| 18 | 1.2.1.4 | Submeter DRE para aprovação do cliente | milestone | 0d | 2024-06-03 09:00 A | 2024-06-03 09:00 A | 17 | 100% |  | 2024-06-12 10:20 | 2024-06-12 10:20 | 0d |  | Arquiteto de Software |  |  |  |  |  |
| 19 | 1.2.2 | **MRB** |  | 5d | 2024-06-03 09:00 A | 2024-06-07 18:00 A |  | 100% |  | 2024-06-12 10:20 | 2024-06-14 15:20 | 2.5d |  |  | 42h | 42h | 2,535 | 1,095 | 2,535 |
| 20 | 1.2.2.1 | Elaborar MRB |  | 5d | 2024-06-03 09:00 A | 2024-06-07 18:00 A | 18 | 100% |  | 2024-06-12 10:20 | 2024-06-14 10:20 | 2d |  | Registrador e Documentador Técnico | 40h | 40h | 2,400 | 960 | 2,400 |
| 21 | 1.2.2.2 | Revisar MRB |  | 0.5d | 2024-06-07 09:00 A | 2024-06-07 14:00 A | 20 | 100% |  | 2024-06-14 10:20 | 2024-06-14 15:20 | 0.5d |  | Arquiteto de Software [25%]; Testador de Qualidade [25%] | 2h | 2h | 135 | 135 | 135 |
| 22 | 1.3 | **Projeto** |  | 2d | 2024-06-10 09:00 A | 2024-06-11 18:00 A |  | 100% |  | 2024-06-14 15:20 | 2024-06-20 15:20 | 4d |  |  | 17h | 17h | 1,135 | 1,135 | 1,135 |
| 23 | 1.3.1 | **Diagrama de Classes** |  | 2d | 2024-06-10 09:00 A | 2024-06-11 18:00 A |  | 100% |  | 2024-06-14 15:20 | 2024-06-19 10:20 | 2.5d |  |  | 11h | 11h | 730 | 730 | 730 |
| 24 | 1.3.1.1 | Elaborar Diagrama de Classes |  | 0.5d | 2024-06-10 09:00 A | 2024-06-10 14:00 A | 21 | 100% |  | 2024-06-14 15:20 | 2024-06-17 10:20 | 0.5d |  | Arquiteto de Software; Registrador e Documentador Técnico | 8h | 8h | 560 | 560 | 560 |
| 25 | 1.3.1.2 | Revisar Diagrama de Classes |  | 1d | 2024-06-10 09:00 A | 2024-06-10 18:00 A | 24 | 100% |  | 2024-06-17 10:20 | 2024-06-18 10:20 | 1d |  | Testador de Qualidade [25%] | 2h | 2h | 110 | 110 | 110 |
| 26 | 1.3.1.3 | Atualizar MRB |  | 1d | 2024-06-11 09:00 A | 2024-06-11 18:00 A | 25 | 100% |  | 2024-06-18 10:20 | 2024-06-19 10:20 | 1d |  | Registrador e Documentador Técnico [12.5%] | 1h | 1h | 60 | 60 | 60 |

| ID | WBS | Task | Type | Duration | Start | Finish | Predecessors | Complete | Baseline start | Baseline finish | Baseline duration | Resources | Work | Actual work | Cost | Baseline cost | Actual cost |
| --- | --- | --- | --- | --- | --- | --- | --- | --- | --- | --- | --- | --- | --- | --- | --- | --- | --- |
| 27 | 1.3.2 | **Modelo Entidade Relacionamento** |  | 1d | 2024-06-11 09:00 A | 2024-06-11 18:00 A |  | 100% | 2024-06-19 10:20 | 2024-06-20 15:20 | 1.5d |  | 6h | 6h | 405 | 405 | 405 |
| 28 | 1.3.2.1 | Elaborar MER |  | 0.5d | 2024-06-11 09:00 A | 2024-06-11 14:00 A | 26 | 100% | 2024-06-19 10:20 | 2024-06-19 15:20 | 0.5d | Arquiteto de Software [62.5%]; Registrador e Documentador Técnico [62.5%] | 5h | 5h | 350 | 350 | 350 |
| 29 | 1.3.2.2 | Revisar MER |  | 1d | 2024-06-11 09:00 A | 2024-06-11 18:00 A | 28 | 100% | 2024-06-19 15:20 | 2024-06-20 15:20 | 1d | Testador de Qualidade [12.5%] | 1h | 1h | 55 | 55 | 55 |
| 30 | 1.4 | Planejamento |  | 0.68d | 2024-06-12 09:00 A | 2024-06-12 15:24 A | 29 | 100% | 2024-06-20 15:20 | 2024-06-21 11:44 | 0.68d | Arquiteto de Software; Desenvolvedor e Mantenedor de Código; Desenvolvedor Principal; Registrador e Documentador Técnico; Testador de Qualidade | 27h | 27h | 1,701 | 1,701 | 1,701 |
| 31 | 1.5 | **Implementação** |  | 8.38d | 2024-06-11 09:00 A | 2024-06-21 12:00 A |  | 100% | 2024-06-21 11:44 | 2024-07-09 11:24 | 11.96d |  | 130.8h | 130.8h | 8,580 | 15,100 | 8,580 |
| 32 | 1.5.1 | **Release 01** |  | 2d | 2024-06-11 09:00 A | 2024-06-12 18:00 A |  | 100% | 2024-06-21 11:44 | 2024-06-28 17:24 | 5.58d |  | 7.8h | 7.8h | 520 | 7,040 | 520 |
| 33 | 1.5.1.1 | **Implementação RFC01** |  | 2d | 2024-06-11 09:00 A | 2024-06-12 18:00 A |  | 100% | 2024-06-21 11:44 | 2024-06-25 11:44 | 2d |  | 7.8h | 7.8h | 520 | 2,153.33 | 520 |
| 34 | 1.5.1.1.1 | Implementar RFS01 |  | 0.33d | 2024-06-11 09:00 A | 2024-06-12 18:00 A | 30 | 100% | 2024-06-21 11:44 | 2024-06-21 16:44 | 0.5d | Arquiteto de Software; Desenvolvedor e Mantenedor de Código; Desenvolvedor Principal | 7.8h | 7.8h | 520 | 800 | 520 |
| 35 | 1.5.1.1.2 | Implementar RFS02 | milestone | 0d | 2024-06-11 09:00 A | 2024-06-12 18:00 A | 34 | 100% | 2024-06-21 16:44 | 2024-06-24 10:24 | 0.33d | Arquiteto de Software [87.5%]; Desenvolvedor e Mantenedor de Código [87.5%]; Desenvolvedor Principal [87.5%] |  |  |  | 466.67 |  |
| 36 | 1.5.1.1.3 | Implementar RFS03 | milestone | 0d | 2024-06-11 09:00 A | 2024-06-12 18:00 A | 35 | 100% | 2024-06-24 10:24 | 2024-06-24 14:04 | 0.33d | Arquiteto de Software [62.5%]; Desenvolvedor e Mantenedor de Código [62.5%]; Desenvolvedor Principal [62.5%] |  |  |  | 333.33 |  |
| 37 | 1.5.1.1.4 | Implementar RFS04 | milestone | 0d | 2024-06-11 09:00 A | 2024-06-12 18:00 A | 36 | 100% | 2024-06-24 14:04 | 2024-06-24 16:44 | 0.33d | Arquiteto de Software [62.5%]; Desenvolvedor e Mantenedor de Código [62.5%]; Desenvolvedor Principal [62.5%] |  |  |  | 333.33 |  |
| 38 | 1.5.1.1.5 | Testar RFC01 | milestone | 0d | 2024-06-11 09:00 A | 2024-06-12 18:00 A | 37 | 100% | 2024-06-24 16:44 | 2024-06-25 11:44 | 0.5d | Testador de Qualidade |  |  |  | 220 |  |
| 39 | 1.5.1.2 | **Implementação RFC02** |  | 2d | 2024-06-11 09:00 A | 2024-06-12 18:00 A |  | 100% | 2024-06-25 11:44 | 2024-06-28 17:24 | 3.58d |  |  |  |  | 4,886.67 |  |
| 40 | 1.5.1.2.1 | Implementar RFS05 | milestone | 0d | 2024-06-11 09:00 A | 2024-06-12 18:00 A | 38 | 100% | 2024-06-25 11:44 | 2024-06-26 09:04 | 0.67d | Arquiteto de Software; Desenvolvedor e Mantenedor de Código; Desenvolvedor Principal |  |  |  | 1,066.67 |  |
| 41 | 1.5.1.2.2 | Implementar RFS06 | milestone | 0d | 2024-06-11 09:00 A | 2024-06-12 18:00 A | 40 | 100% | 2024-06-26 09:04 | 2024-06-26 13:24 | 0.42d | Arquiteto de Software; Desenvolvedor e Mantenedor de Código; Desenvolvedor Principal |  |  |  | 666.67 |  |
| 42 | 1.5.1.2.3 | Implementar RFS07 | milestone | 0d | 2024-06-11 09:00 A | 2024-06-12 18:00 A | 41 | 100% | 2024-06-26 13:24 | 2024-06-26 16:04 | 0.33d | Arquiteto de Software [75%]; Desenvolvedor e Mantenedor de Código [75%]; Desenvolvedor Principal [75%] |  |  |  | 400 |  |
| 43 | 1.5.1.2.4 | Implementar RFS08 | milestone | 0d | 2024-06-11 09:00 A | 2024-06-12 18:00 A | 42 | 100% | 2024-06-26 16:04 | 2024-06-27 09:44 | 0.33d | Arquiteto de Software [75%]; Desenvolvedor e Mantenedor de Código [75%]; Desenvolvedor Principal [75%] |  |  |  | 400 |  |
| 44 | 1.5.1.2.5 | Implementar RFS09 | milestone | 0d | 2024-06-11 09:00 A | 2024-06-12 18:00 A | 43 | 100% | 2024-06-27 09:44 | 2024-06-27 16:04 | 0.67d | Arquiteto de Software; Desenvolvedor e Mantenedor de Código; Desenvolvedor Principal |  |  |  | 1,066.67 |  |
| 45 | 1.5.1.2.6 | Implementar RFS10 | milestone | 0d | 2024-06-11 09:00 A | 2024-06-12 18:00 A | 44 | 100% | 2024-06-27 16:04 | 2024-06-28 13:24 | 0.67d | Arquiteto de Software; Desenvolvedor e Mantenedor de Código; Desenvolvedor Principal |  |  |  | 1,066.67 |  |
| 46 | 1.5.1.2.7 | Testar RFC02 | milestone | 0d | 2024-06-11 09:00 A | 2024-06-12 18:00 A | 45 | 100% | 2024-06-28 13:24 | 2024-06-28 17:24 | 0.5d | Testador de Qualidade |  |  |  | 220 |  |
| 47 | 1.5.2 | **Release 02** |  | 4.54d | 2024-06-13 09:00 A | 2024-06-19 14:20 A |  | 100% | 2024-06-28 17:24 | 2024-07-05 13:44 | 4.54d |  | 87h | 87h | 5,706.67 | 5,706.67 | 5,706.67 |
| 48 | 1.5.2.1 | **Implementação RFC03** |  | 3.33d | 2024-06-13 09:00 A | 2024-06-18 11:40 A |  | 100% | 2024-06-28 17:24 | 2024-07-04 11:04 | 3.33d |  | 69h | 69h | 4,553.33 | 4,553.33 | 4,553.33 |
| 49 | 1.5.2.1.1 | Implementar RFS11 |  | 0.42d | 2024-06-13 09:00 A | 2024-06-13 13:20 A | 46 | 100% | 2024-06-28 17:24 | 2024-07-01 11:44 | 0.42d | Arquiteto de Software; Desenvolvedor e Mantenedor de Código; Desenvolvedor Principal | 10h | 10h | 666.67 | 666.67 | 666.67 |
| 50 | 1.5.2.1.2 | Implementar RFS12 |  | 0.38d | 2024-06-13 13:20 A | 2024-06-13 16:20 A | 49 | 100% | 2024-07-01 11:44 | 2024-07-01 15:44 | 0.38d | Arquiteto de Software; Desenvolvedor e Mantenedor de Código; Desenvolvedor Principal | 9h | 9h | 600 | 600 | 600 |
| 51 | 1.5.2.1.3 | Implementar RFS13 |  | 0.33d | 2024-06-13 16:20 A | 2024-06-14 10:00 A | 50 | 100% | 2024-07-01 15:44 | 2024-07-02 09:24 | 0.33d | Arquiteto de Software [62.5%]; Desenvolvedor e Mantenedor de Código [62.5%]; Desenvolvedor Principal [62.5%] | 5h | 5h | 333.33 | 333.33 | 333.33 |
| 52 | 1.5.2.1.4 | Implementar RFS14 |  | 0.38d | 2024-06-14 10:00 A | 2024-06-14 14:00 A | 51 | 100% | 2024-07-02 09:24 | 2024-07-02 13:24 | 0.38d | Arquiteto de Software; Desenvolvedor e Mantenedor de Código; Desenvolvedor Principal | 9h | 9h | 600 | 600 | 600 |
| 53 | 1.5.2.1.5 | Implementar RFS15 |  | 0.67d | 2024-06-14 14:00 A | 2024-06-17 10:20 A | 52 | 100% | 2024-07-02 13:24 | 2024-07-03 09:44 | 0.67d | Arquiteto de Software; Desenvolvedor e Mantenedor de Código; Desenvolvedor Principal | 16h | 16h | 1,066.67 | 1,066.67 | 1,066.67 |
| 54 | 1.5.2.1.6 | Implementar RFS16 |  | 0.67d | 2024-06-17 10:20 A | 2024-06-17 16:40 A | 53 | 100% | 2024-07-03 09:44 | 2024-07-03 16:04 | 0.67d | Arquiteto de Software; Desenvolvedor e Mantenedor de Código; Desenvolvedor Principal | 16h | 16h | 1,066.67 | 1,066.67 | 1,066.67 |
| 55 | 1.5.2.1.7 | Testar RFC03 |  | 0.5d | 2024-06-17 16:40 A | 2024-06-18 11:40 A | 54 | 100% | 2024-07-03 16:04 | 2024-07-04 11:04 | 0.5d | Testador de Qualidade | 4h | 4h | 220 | 220 | 220 |

| ID | WBS | Task | Duration | Start | Finish | Predecessors | Complete | Baseline start | Baseline finish | Baseline duration | Total slack | Resources | Work | Actual work | Cost | Baseline cost | Actual cost |
| --- | --- | --- | --- | --- | --- | --- | --- | --- | --- | --- | --- | --- | --- | --- | --- | --- | --- |
| 56 | 1.5.2.2 | **Implementação RFC04** | 1.21d | 2024-06-18 11:40 A | 2024-06-19 14:20 A |  | 100% | 2024-07-04 11:04 | 2024-07-05 13:44 | 1.21d |  |  | 18h | 18h | 1,153.33 | 1,153.33 | 1,153.33 |
| 57 | 1.5.2.2.1 | Implementar RFS17 | 0.38d | 2024-06-18 11:40 A | 2024-06-18 15:40 A | 55 | 100% | 2024-07-04 11:04 | 2024-07-04 15:04 | 0.38d |  | Arquiteto de Software; Desenvolvedor e Mantenedor de Código; Desenvolvedor Principal | 9h | 9h | 600 | 600 | 600 |
| 58 | 1.5.2.2.2 | Implementar RFS18 | 0.33d | 2024-06-18 15:40 A | 2024-06-19 09:20 A | 57 | 100% | 2024-07-04 15:04 | 2024-07-04 17:44 | 0.33d |  | Arquiteto de Software [62.5%]; Desenvolvedor e Mantenedor de Código [62.5%]; Desenvolvedor Principal [62.5%] | 5h | 5h | 333.33 | 333.33 | 333.33 |
| 59 | 1.5.2.2.3 | Testar RFC04 | 0.5d | 2024-06-19 09:20 A | 2024-06-19 14:20 A | 58 | 100% | 2024-07-04 17:44 | 2024-07-05 13:44 | 0.5d |  | Testador de Qualidade | 4h | 4h | 220 | 220 | 220 |
| 60 | 1.5.3 | **Release 03** | 1.83d | 2024-06-19 14:20 A | 2024-06-21 12:00 A |  | 100% | 2024-07-05 13:44 | 2024-07-09 11:24 | 1.83d |  |  | 36h | 36h | 2,353.33 | 2,353.33 | 2,353.33 |
| 61 | 1.5.3.1 | **Implementação RFC05** | 1.83d | 2024-06-19 14:20 A | 2024-06-21 12:00 A |  | 100% | 2024-07-05 13:44 | 2024-07-09 11:24 | 1.83d |  |  | 36h | 36h | 2,353.33 | 2,353.33 | 2,353.33 |
| 62 | 1.5.3.1.1 | Implementar RFS19 | 0.67d | 2024-06-19 14:20 A | 2024-06-20 10:40 A | 59 | 100% | 2024-07-05 13:44 | 2024-07-08 10:04 | 0.67d |  | Arquiteto de Software; Desenvolvedor e Mantenedor de Código; Desenvolvedor Principal | 16h | 16h | 1,066.67 | 1,066.67 | 1,066.67 |
| 63 | 1.5.3.1.2 | Implementar RFS20 | 0.67d | 2024-06-20 10:40 A | 2024-06-20 17:00 A | 62 | 100% | 2024-07-08 10:04 | 2024-07-08 16:24 | 0.67d |  | Arquiteto de Software; Desenvolvedor e Mantenedor de Código; Desenvolvedor Principal | 16h | 16h | 1,066.67 | 1,066.67 | 1,066.67 |
| 64 | 1.5.3.1.3 | Testar RFC05 | 0.5d | 2024-06-20 17:00 A | 2024-06-21 12:00 A | 63 | 100% | 2024-07-08 16:24 | 2024-07-09 11:24 | 0.5d |  | Testador de Qualidade | 4h | 4h | 220 | 220 | 220 |
| 65 | 1.6 | **Monitoramento e Controle** | 1.12d | 2024-06-21 13:00 A | 2024-06-24 14:00 A |  | 100% | 2024-07-09 11:24 | 2024-07-10 13:24 | 1.12d |  |  | 9h | 9h | 720 | 720 | 720 |
| 66 | 1.6.1 | Acompanhar Projeto | 1.12d | 2024-06-21 13:00 A | 2024-06-24 14:00 A | 64 | 100% | 2024-07-09 11:24 | 2024-07-10 13:24 | 1.12d |  | Arquiteto de Software | 9h | 9h | 720 | 720 | 720 |
| 67 | 1.7 | Fase de Fechamento | 0.5d? | 2024-06-24 14:00 A | 2024-06-24 18:00 A | 66 | 100% | 2024-07-10 13:24 | 2024-07-12 10:24 | 1.75d? |  | Arquiteto de Software; Registrador e Documentador Técnico | 8h | 8h | 560 | 1,960 | 560 |
| 68 | 1.8 | Processo de Controle de Mudanças | 1.5d | 2024-06-25 09:00 | 2024-06-26 14:00 | 67 |  | 2024-07-12 10:24 | 2024-07-16 09:24 | 1.88d | 0d | Desenvolvedor e Mantenedor de Código | 12h |  | 720 | 900 |  |
